# Projektverlaufsplan Sec-Rover

Schedule from MS Project, 2018-04-26 to 2018-08-12, 10 hours a day, A marks actual dates.

## Calendars

- Standard: Mon-Sun 08:00-18:00.

## Resources

| Resource |
| --- |
| Cristoph Petersen |
| Robin Klamm |

## Schedule

| ID | Task | Type | Duration | Start | Finish | Predecessors | Complete | Total slack | Free slack | Constraint | Resources | Work | Actual work |
| --- | --- | --- | --- | --- | --- | --- | --- | --- | --- | --- | --- | --- | --- |
| 1 | Erstellen einer Anforderungsliste | manual | 1d | 2018-04-26 A | 2018-04-27 A |  | 100% |  |  |  | Cristoph Petersen; Robin Klamm | 20h | 20h |
| 2 | Designen des Sec-Rovers | manual | 5d | 2018-04-27 A | 2018-05-05 A | 1 | 100% |  |  |  | Cristoph Petersen; Robin Klamm | 100h | 100h |
| 3 | Konstruieren der Roboterplattform | manual | 5d | 2018-05-06 A | 2018-05-14 A | 2 | 100% |  |  |  | Cristoph Petersen; Robin Klamm | 100h | 100h |
| 4 | Erstellen einer Liste für Bautteile | manual | 1d | 2018-05-15 A | 2018-05-16 A | 3 | 100% |  |  |  | Cristoph Petersen; Robin Klamm | 20h | 20h |
| 5 | Beschaffung von Bauteilen | manual | 7d | 2018-05-17 A | 2018-05-27 A | 4 | 100% |  |  |  | Cristoph Petersen; Robin Klamm | 140h | 140h |
| 6 | Konstruieren der Elektronik für die Energieeinspeisung | manual | 8d | 2018-05-28 A | 2018-06-10 A | 5 | 100% |  |  |  | Robin Klamm | 80h | 80h |
| 7 | Konstruieren der Elektronik für die Antriebsmotoren |  | 4d | 2018-06-10 | 2018-06-14 | 6 |  | 0d |  |  | Robin Klamm | 40h |  |
| 8 | Rasberry Pi 3 für Programmierung vorbereiten |  | 4d | 2018-06-10 | 2018-06-14 | 6 |  | 6d | 0d |  | Cristoph Petersen | 40h |  |
| 9 | Elektronik für die Ultraschallsensoren aufsetzen |  | 10d | 2018-06-14 | 2018-06-24 | 7 |  | 0d |  |  | Robin Klamm | 100h |  |
| 10 | Programmcode für die Fahrkontrolle Entwickeln |  | 9d | 2018-06-14 | 2018-06-23 | 7, 8 |  | 6d | 1d |  | Cristoph Petersen | 90h |  |
| 11 | Programmcode für die Navigation entwickeln |  | 9d | 2018-06-24 | 2018-07-03 | 9, 10 |  | 5d | 0d |  | Cristoph Petersen | 90h |  |
| 12 | Konstruktion des Mikrofons und des Lautsprechers |  | 7d | 2018-06-24 | 2018-07-01 | 9 |  | 0d |  |  | Robin Klamm | 70h |  |
| 13 | Programmierung der Sprachsteuerung |  | 7d | 2018-07-03 | 2018-07-10 | 11, 12 |  | 5d |  |  | Cristoph Petersen | 70h |  |
| 14 | Entwickeln eines Konzepts für die Kamera |  | 7d | 2018-07-01 | 2018-07-08 | 12 |  | 0d |  |  | Cristoph Petersen; Robin Klamm | 140h |  |
| 15 | Anbringung der Kamera |  | 7d | 2018-07-08 | 2018-07-15 | 14 |  | 0d |  |  | Robin Klamm | 70h |  |
| 16 | Abschließende Konstruktionsaufgaben |  | 7d | 2018-07-15 | 2018-07-22 | 15 |  | 12d |  |  | Robin Klamm | 70h |  |
| 17 | Einbinden der Kamera und der Bewegungserkennung |  | 12d | 2018-07-15 | 2018-07-27 | 13, 15 |  | 0d |  |  | Cristoph Petersen | 120h |  |
| 18 | Abschließende Programmieraufgaben |  | 7d | 2018-07-27 | 2018-08-03 | 17 |  | 0d |  |  | Cristoph Petersen | 70h |  |
| 19 | Testen des Roboters und nötige justierungen |  | 4d | 2018-08-03 | 2018-08-07 | 16, 18 |  | 0d |  |  | Cristoph Petersen; Robin Klamm | 80h |  |
| 20 | Abnahme vom Professor |  | 1d | 2018-08-07 | 2018-08-08 | 19 |  | 0d |  |  | Cristoph Petersen; Robin Klamm | 20h |  |
| 21 | Nötige Nacharbeit |  | 3d | 2018-08-08 | 2018-08-11 | 20 |  | 0d |  | finish no earlier than 2018-06-09 | Cristoph Petersen; Robin Klamm | 60h |  |
| 22 | Dokumentation Anfertigen |  | 1d | 2018-08-08 | 2018-08-08 | 19 |  | 2.9d |  | finish no earlier than 2018-08-08 | Cristoph Petersen; Robin Klamm | 20h |  |
| 23 | Übergabe |  | 1d | 2018-08-11 | 2018-08-12 | 21, 22 |  | 0d |  |  | Cristoph Petersen; Robin Klamm | 20h |  |
